# Plano de projeto

How a schedule from MS Project changed from version to version. A marks actual dates.

## Version 1 (saved 2015-11-11)

Note of the change: Documentação do projeto

| ID | WBS | Task | Duration | Start | Finish | Predecessors | Complete | Total float |
| --- | --- | --- | --- | --- | --- | --- | --- | --- |
| 1 | 1 | **Projeto PetAdoption** | 28.5d | 2015-09-22 13:00 A | 2015-10-30 17:00 |  | 52% | 0d |
| 2 | 1.1 | **Prospecção** | 4.12d | 2015-09-22 13:00 A | 2015-09-28 14:00 A |  | 100% |  |
| 3 | 1.1.1 | **Proposta técnica** | 2.12d | 2015-09-22 13:00 A | 2015-09-24 14:00 A |  | 100% |  |
| 4 |  | Estudar dominio da aplicação | 0.25d | 2015-09-22 13:00 A | 2015-09-22 15:00 A |  | 100% |  |
| 5 |  | Reunir-se com o cliente | 0.12d | 2015-09-22 14:00 A | 2015-09-22 15:00 A | 4 | 100% |  |
| 6 |  | Redigir a proposta técnica | 0.62d | 2015-09-22 16:00 A | 2015-09-23 17:00 A | 5 | 100% |  |
| 7 |  | Corrigir a proposta técnica | 0.12d | 2015-09-24 13:00 A | 2015-09-24 14:00 A | 9 | 100% |  |
| 8 | 1.1.2 | **Checklist de requisitos** | 0d | 2015-09-24 08:00 A | 2015-09-24 09:00 A |  | 100% |  |
| 9 |  | Revisar a proposta técnica | 0.12d | 2015-09-24 08:00 A | 2015-09-24 09:00 A | 6 | 100% |  |
| 10 | 1.1.3 | **Estimativa preliminar de esfoço/tamanho** | 2d | 2015-09-24 14:00 A | 2015-09-28 14:00 A |  | 100% |  |
| 11 |  | Estimar tamanho do projeto | 2d | 2015-09-24 14:00 A | 2015-09-28 14:00 A | 7 | 100% |  |
| 12 | 1.1.4 | **Cronograma/orçamento preliminar** | 0.25d | 2015-09-24 14:00 A | 2015-09-24 16:00 A |  | 100% |  |
| 13 |  | Estimar cronograma/orçamento | 0.25d | 2015-09-24 14:00 A | 2015-09-24 16:00 A | 7 | 100% |  |
| 14 | 1.2 | **Análise** | 5.25d | 2015-09-24 14:00 A | 2015-10-01 16:00 A |  | 100% |  |
| 15 | 1.2.1 | **Documento de requisitos** | 5.12d | 2015-09-24 14:00 A | 2015-10-01 15:00 A |  | 100% |  |
| 16 |  | Definir requisitos funcionais de sistema | 0.62d | 2015-09-24 14:00 A | 2015-09-25 15:00 A | 7 | 100% |  |
| 17 |  | Redigir o documento de requisitos | 2.94d | 2015-09-25 15:00 A | 2015-09-30 14:30 A | 16 | 100% |  |
| 18 |  | Revisar com a equipe | 0.12d | 2015-09-30 14:30 A | 2015-09-30 15:30 A | 17 | 100% |  |
| 19 |  | Validar com o cliente | 0.25d | 2015-10-01 13:00 A | 2015-10-01 15:00 A | 18 | 100% |  |
| 20 | 1.2.2 | **Checklist de requisitos** | 0.12d | 2015-10-01 15:00 A | 2015-10-01 16:00 A |  | 100% |  |
| 21 |  | Corrigir o documento de requisitos | 0.12d | 2015-10-01 15:00 A | 2015-10-01 16:00 A | 19 | 100% |  |
| 22 | 1.3 | **Projeto** | 2.62d | 2015-10-01 16:00 | 2015-10-06 12:00 |  |  | 18d |
| 23 | 1.3.1 | **Diagrama de caso de uso** | 1.75d | 2015-10-01 16:00 | 2015-10-05 14:00 |  |  | 18.38d |
| 24 |  | Fazer diagrama de caso de uso | 0.75d | 2015-10-01 16:00 | 2015-10-05 14:00 | 21 |  | 18.38d |
| 25 | 1.3.2 | **MER** | 0.38d | 2015-10-06 08:00 | 2015-10-06 12:00 |  |  | 18d |
| 26 |  | Fazer diagrama modelo entidade relacionamento | 0.5d | 2015-10-06 08:00 | 2015-10-06 12:00 | 24 |  | 18d |
| 27 | 1.4 | **Planejamento** | 2.81d | 2015-10-01 16:00 A | 2015-10-06 14:30 A |  | 100% |  |
| 28 |  | Plano definitivo de esforço e tamanho | 0.62d | 2015-10-01 16:00 A | 2015-10-02 14:30 A | 21, 19 | 100% |  |
| 29 |  | Plano definitivo de orçamento | 1d | 2015-10-02 14:30 A | 2015-10-06 14:30 A | 28 | 100% |  |
| 30 | 1.5 | **Desenvolvimento** | 13.31d | 2015-10-06 14:30 A | 2015-10-23 17:00 |  | 44% | 0d |
| 31 | 1.5.1 | **Gerar código fonte** | 6d | 2015-10-06 14:30 A | 2015-10-14 14:30 | 29 | 55% | 0d |
| 32 |  | RFC[01] Manter usuários | 6d | 2015-10-06 14:30 A | 2015-10-14 14:30 A |  | 100% |  |
| 33 |  | RFC[02] Manter acesso dos usuários | 3d | 2015-10-06 14:30 A | 2015-10-09 04:30 A |  | 100% |  |
| 34 |  | RFC[03] Manter animais | 1.5d | 2015-10-06 14:30 A | 2015-10-08 11:00 A |  | 100% |  |
| 35 |  | RFC[04] Manter notificações | 2.75d | 2015-10-06 14:30 | 2015-10-09 11:30 |  |  |  |
| 36 |  | RFC[05] Manter adoções | 3.88d | 2015-10-06 14:30 | 2015-10-12 13:30 |  |  |  |
| 37 |  | RFC[06] Manter classificação usuários | 1.94d | 2015-10-06 14:30 | 2015-10-08 15:30 |  |  |  |
| 38 | 1.5.2 | **Teste** | 7.31d | 2015-10-14 14:30 | 2015-10-23 17:00 |  |  | 0d |
| 39 | 1.5.2.1 | **Documento de caso de teste** | 3.12d | 2015-10-14 14:30 | 2015-10-19 15:30 |  |  | 0d |
| 40 |  | Redigir DCT | 2d | 2015-10-14 14:30 | 2015-10-16 14:30 | 31 |  | 0d |
| 41 |  | Revisar documento | 0.62d | 2015-10-16 14:30 | 2015-10-19 15:30 | 40 |  | 0d |
| 42 | 1.5.2.2 | **Plano de teste** | 4.19d | 2015-10-19 15:30 | 2015-10-23 17:00 |  |  | 0d |
| 43 |  | Redigir plano de teste | 1.25d | 2015-10-19 15:30 | 2015-10-22 13:30 | 41 |  | 0d |
| 44 |  | Executar plano de teste | 0.94d | 2015-10-22 13:30 | 2015-10-23 17:00 | 43 |  | 0d |
| 45 | 1.6 | **Fase de monitoramento e controle** | 0.75d | 2015-10-26 08:00 | 2015-10-26 16:00 |  |  | 0.12d |
| 46 |  | Gerar documento de monitoramento e controle | 0.25d | 2015-10-26 08:00 | 2015-10-26 10:00 | 44 |  | 0.12d |
| 47 |  | Executar monitoramento e controle | 0.38d | 2015-10-26 13:00 | 2015-10-26 16:00 | 46 |  | 0.12d |
| 48 | 1.7 | **Fechamento** | 2.04d | 2015-10-27 08:00 | 2015-10-29 09:20 |  |  | 0.12d |
| 49 |  | Gerar ata de reunião | 0.75d | 2015-10-27 08:00 | 2015-10-28 10:00 | 47 |  | 0.12d |
| 50 |  | Reunir-se com a equipe | 0.83d | 2015-10-28 10:00 | 2015-10-29 09:20 | 49 |  | 0.58d |
| 51 | 1.8 | **Processo controle de mudança** | 1.5d | 2015-10-29 13:00 | 2015-10-30 17:00 |  |  | 0d |
| 52 |  | Registrar mudança | 0.25d | 2015-10-29 13:00 | 2015-10-29 15:00 | 50 |  | 0.25d |
| 53 |  | Estudar viabilidade | 0.25d | 2015-10-30 08:00 | 2015-10-30 10:00 | 52 |  | 0.12d |
| 54 |  | Executar mudança | 0.5d | 2015-10-30 13:00 | 2015-10-30 17:00 | 53 |  | 0d |

## Version 2 (saved 2015-11-25)

Note of the change: Merge branch 'master' of https://github.com/SantosAdan/PETadoption

Last finish stays 2015-10-30. Complete tasks 17 → 19.

Changed:

| ID | Task | Start | Finish | Duration | Complete | Total float |
| --- | --- | --- | --- | --- | --- | --- |
| 1 | **Projeto PetAdoption** |  |  |  | 52% → 55% |  |
| 22 | **Projeto** | 2015-10-01 16:00 A | 2015-10-06 12:00 → 2015-10-05 11:00 A (-1d) | 2.62d → 1.5d | 0% → 100% | 18d → none |
| 23 | **Diagrama de caso de uso** | 2015-10-01 16:00 A | 2015-10-05 14:00 → 2015-10-02 15:00 A (-3d) | 1.75d → 0.88d | 0% → 100% | 18.38d → none |
| 24 | Fazer diagrama de caso de uso | 2015-10-01 16:00 A | 2015-10-05 14:00 → 2015-10-02 15:00 A (-3d) | 0.75d → 0.38d | 0% → 100% | 18.38d → none |
| 25 | **MER** | 2015-10-06 08:00 → 2015-10-05 08:00 A (-1d) | 2015-10-06 12:00 → 2015-10-05 11:00 A (-1d) | 0.38d → 0.25d | 0% → 100% | 18d → none |
| 26 | Fazer diagrama modelo entidade relacionamento | 2015-10-06 08:00 → 2015-10-05 08:00 A (-1d) | 2015-10-06 12:00 → 2015-10-05 11:00 A (-1d) | 0.5d → 0.38d | 0% → 100% | 18d → none |

## Version 3 (saved 2015-11-27)

Last finish stays 2015-10-30. Complete tasks 19 → 20.

Changed:

| ID | Task | Start | Finish | Duration | Complete |
| --- | --- | --- | --- | --- | --- |
| 1 | **Projeto PetAdoption** |  |  |  | 55% → 59% |
| 30 | **Desenvolvimento** |  |  |  | 44% → 49% |
| 31 | **Gerar código fonte** |  |  |  | 55% → 63% |
| 37 | RFC[06] Manter classificação usuários | 2015-10-06 14:30 A | 2015-10-08 15:30 → 2015-10-06 21:00 A (-2d) | 1.94d → 0.62d | 0% → 100% |

## Version 4 (saved 2015-11-30)

Last finish stays 2015-10-30. Complete tasks 20 → 21.

Changed:

| ID | Task | Start | Finish | Complete |
| --- | --- | --- | --- | --- |
| 1 | **Projeto PetAdoption** |  |  | 59% → 76% |
| 30 | **Desenvolvimento** |  |  | 49% → 76% |
| 31 | **Gerar código fonte** |  |  | 63% → 97% |
| 35 | RFC[04] Manter notificações | 2015-10-06 14:30 A |  | 0% → 80% |
| 36 | RFC[05] Manter adoções | 2015-10-06 14:30 A | 2015-10-12 13:30 A | 0% → 100% |
